# 净速项目-时间规划

Schedule from MS Project, 2020-03-02 to 2020-07-17, costs in ¥.

## Calendars

- 标准: Mon-Fri 08:00-12:00, 13:00-17:00; Sat-Sun off.

## Resources

| Resource | Group |
| --- | --- |
| 谷小雨 | 项目经理 |
| 张春庆 | 设计专家 |
| 孙颖 | 质量专家 |
| 赵若曦 | 产品经理 |
| 赵若曦 | 测试人员 |
| 张春庆 | UI专家 |
| 谷小雨 | 开发人员 |
| 谷小雨 | 程序员1 |
| 赵若曦 | 程序员2 |
| 张春庆 | 程序员3 |
| 孙颖 | 程序员4 |
| 孙颖 | 测试人员 |
| 间接成本 |  |
| 间接成本 |  |
| 储备 |  |

## Schedule

| ID | WBS | Task | Type | Duration | Start | Finish | Predecessors | Resources | Work | Cost |
| --- | --- | --- | --- | --- | --- | --- | --- | --- | --- | --- |
| 1 | 1 | **启动** |  | 5d | 2020-03-02 | 2020-03-06 |  | 间接成本 [0.1%]; 储备 [0.1%] | 40h | 1,580 |
| 2 | 1.1 | 组建核心团队 | manual | 1d | 2020-03-02 | 2020-03-02 |  | 谷小雨 | 8h | 480 |
| 3 | 1.2 | 干系人分析 | manual | 1d | 2020-03-03 | 2020-03-03 |  | 谷小雨 | 8h | 100 |
| 4 | 1.3 | 里程碑进度规划 | manual | 1d | 2020-03-04 | 2020-03-04 |  | 张春庆 | 8h | 100 |
| 5 | 1.4 | 制定项目章程 | manual | 1d | 2020-03-05 | 2020-03-05 | 2, 3, 4 | 张春庆 | 8h | 100 |
| 6 | 1.5 | 项目启动大会 | manual | 1d | 2020-03-06 | 2020-03-06 | 5 | 张春庆 | 8h | 100 |
| 7 | 2 | **规划** |  | 33d | 2020-03-09 | 2020-04-22 |  | 间接成本 [0.1%]; 储备 [0.1%] | 312h | 18,340 |
| 8 | 2.1 | **规划范围** |  | 5d | 2020-03-09 | 2020-03-13 |  |  | 40h | 2,040 |
| 9 | 2.1.1 | 制定范围管理计划 | manual | 1d | 2020-03-09 | 2020-03-09 | 6 | 谷小雨 | 8h | 480 |
| 10 | 2.1.2 | 收集需求 | manual | 1d | 2020-03-10 | 2020-03-10 | 9 | 赵若曦 | 8h | 280 |
| 11 | 2.1.3 | 定义范围 | manual | 1d | 2020-03-11 | 2020-03-11 | 10 | 孙颖 | 8h | 320 |
| 12 | 2.1.4 | 创建工作分解结构wbs | manual | 1d | 2020-03-12 | 2020-03-12 | 11 | 谷小雨 | 8h | 480 |
| 13 | 2.1.5 | 形成范围基准 | manual | 1d | 2020-03-13 | 2020-03-13 | 12 | 谷小雨 | 8h | 480 |
| 14 | 2.2 | **规划时间** |  | 7d | 2020-03-16 | 2020-03-24 |  |  | 56h | 2,960 |
| 15 | 2.2.1 | 排列工作包顺序 | manual | 1d | 2020-03-16 | 2020-03-16 | 13 | 谷小雨 | 8h | 480 |
| 16 | 2.2.2 | 估算资源 | manual | 2d | 2020-03-17 | 2020-03-18 | 15 | 赵若曦 | 16h | 560 |
| 17 | 2.2.3 | 估算持续时间 | manual | 2d | 2020-03-19 | 2020-03-20 | 16 | 谷小雨 | 16h | 960 |
| 18 | 2.2.4 | 制定进度计划 | manual | 1d | 2020-03-23 | 2020-03-23 | 17 | 谷小雨 | 8h | 480 |
| 19 | 2.2.5 | 形成进度基准 | manual | 1d | 2020-03-24 | 2020-03-24 | 18 | 谷小雨 | 8h | 480 |
| 20 | 2.3 | **规划成本** |  | 6d | 2020-03-25 | 2020-04-01 |  |  | 48h | 2,880 |
| 21 | 2.3.1 | 项目成本估算 | manual | 3d | 2020-03-25 | 2020-03-27 | 19 | 谷小雨 | 24h | 1,440 |
| 22 | 2.3.2 | 项目预算 | manual | 2d | 2020-03-30 | 2020-03-31 | 21 | 谷小雨 | 16h | 960 |
| 23 | 2.3.3 | 形成范围基准 | manual | 1d | 2020-04-01 | 2020-04-01 | 22 | 谷小雨 | 8h | 480 |
| 24 | 2.4 | **规划质量** |  | 8d | 2020-03-30 | 2020-04-08 |  |  | 96h | 3,600 |
| 25 | 2.4.1 | 制定测试计划 | manual | 2d | 2020-03-31 | 2020-04-01 | 13 | 张春庆; 赵若曦 | 32h | 1,200 |
| 26 | 2.4.2 | 编写测试用例 | manual | 4d | 2020-04-02 | 2020-04-07 | 25 | 张春庆; 赵若曦 | 64h | 2,400 |

| ID | WBS | Task | Type | Duration | Start | Finish | Predecessors | Resources | Work | Cost |
| --- | --- | --- | --- | --- | --- | --- | --- | --- | --- | --- |
| 27 | 2.5 | **规划人力资源** |  | 2d | 2020-04-09 | 2020-04-10 |  |  | 16h | 960 |
| 28 | 2.5.1 | 制定人员资源计划 | manual | 1d | 2020-04-09 | 2020-04-09 | 16 | 谷小雨 | 8h | 480 |
| 29 | 2.5.2 | 制定人员配备管理计划 | manual | 1d | 2020-04-10 | 2020-04-10 | 28 | 谷小雨 | 8h | 480 |
| 30 | 2.6 | **规划沟通** |  | 1d | 2020-04-13 | 2020-04-13 |  |  | 8h | 480 |
| 31 | 2.6.1 | 制定沟通管理计划 | manual | 1d | 2020-04-13 | 2020-04-13 | 29 | 谷小雨 | 8h | 480 |
| 32 | 2.7 | **规划风险** |  | 3d | 2020-04-14 | 2020-04-16 |  |  | 40h | 1,440 |
| 33 | 2.7.1 | 识别风险 | manual | 1d | 2020-04-14 | 2020-04-14 | 14, 20, 24, 27 | 谷小雨 | 8h | 480 |
| 34 | 2.7.2 | 风险预估 | manual | 1d | 2020-04-15 | 2020-04-15 | 33 | 张春庆; 谷小雨 | 16h | 480 |
| 35 | 2.7.3 | 制定风险登记册 | manual | 1d | 2020-04-16 | 2020-04-16 | 34 | 张春庆; 赵若曦 | 16h | 480 |
| 36 | 2.8 | 规划整合 | manual | 1d | 2020-04-17 | 2020-04-17 | 35 | 谷小雨 | 8h | 480 |
| 37 | 3 | **执行与监控** |  | 57d | 2020-04-27 | 2020-07-14 |  | 间接成本 [0.1%]; 储备 [0.1%] | 584h | 32,560 |
| 38 | 3.1 | 组建项目团队 | manual | 1d | 2020-04-27 | 2020-04-27 | 6 | 谷小雨 | 8h | 480 |
| 39 | 3.2 | **项目执行** |  | 28d | 2020-04-28 | 2020-06-04 |  |  | 224h | 6,720 |
| 40 | 3.2.1 | **用户主页模块** |  | 6d | 2020-04-28 | 2020-05-05 |  |  | 48h | 1,440 |
| 41 | 3.2.1.1 | 浏览主页 | manual | 1d | 2020-04-28 | 2020-04-28 | 38 | 谷小雨 | 8h | 240 |
| 42 | 3.2.1.2 | 搜索商品优惠券 | manual | 2d | 2020-04-29 | 2020-04-30 | 41 | 谷小雨 | 16h | 480 |
| 43 | 3.2.1.3 | 查看优惠券详情 | manual | 1d | 2020-05-01 | 2020-05-01 | 42 | 谷小雨 | 8h | 240 |
| 44 | 3.2.1.4 | 查看佣金 | manual | 1d | 2020-05-04 | 2020-05-04 | 43 | 谷小雨 | 8h | 240 |
| 45 | 3.2.1.5 | 个人资料配置 | manual | 1d | 2020-05-05 | 2020-05-05 | 44 | 谷小雨 | 8h | 240 |
| 46 | 3.2.2 | **商家模块** |  | 6d | 2020-05-06 | 2020-05-13 |  |  | 48h | 1,440 |
| 47 | 3.2.2.1 | 注册入驻 | manual | 1d | 2020-05-06 | 2020-05-06 | 38 | 赵若曦 | 8h | 240 |
| 48 | 3.2.2.2 | 联系管理员 | manual | 2d | 2020-05-07 | 2020-05-08 | 47 | 赵若曦 | 16h | 480 |
| 49 | 3.2.2.3 | 设置优惠券金额与数量 | manual | 1d | 2020-05-11 | 2020-05-11 | 48 | 赵若曦 | 8h | 240 |
| 50 | 3.2.2.4 | 支付定金 | manual | 2d | 2020-05-12 | 2020-05-13 | 49 | 赵若曦 | 16h | 480 |

| ID | WBS | Task | Type | Duration | Start | Finish | Predecessors | Resources | Work | Cost |
| --- | --- | --- | --- | --- | --- | --- | --- | --- | --- | --- |
| 51 | 3.2.3 | **管理员模块** |  | 9d | 2020-05-11 | 2020-05-21 |  |  | 72h | 2,160 |
| 52 | 3.2.3.1 | 商家审核 | manual | 2d | 2020-05-11 | 2020-05-12 | 38 | 张春庆 | 16h | 480 |
| 53 | 3.2.3.2 | 发放优惠券 | manual | 1d | 2020-05-13 | 2020-05-13 | 52 | 张春庆 | 8h | 240 |
| 54 | 3.2.3.3 | 用户管理 | manual | 3d | 2020-05-14 | 2020-05-18 | 53 | 张春庆 | 24h | 720 |
| 55 | 3.2.3.4 | 统计分析 | manual | 1d | 2020-05-19 | 2020-05-19 | 54 | 张春庆 | 8h | 240 |
| 56 | 3.2.3.5 | 备份 | manual | 2d | 2020-05-20 | 2020-05-21 | 55 | 张春庆 | 16h | 480 |
| 57 | 3.2.4 | **登录注册模块** |  | 7d | 2020-05-22 | 2020-06-01 |  |  | 56h | 1,680 |
| 58 | 3.2.4.1 | 选择角色 | manual | 1d | 2020-05-22 | 2020-05-22 | 38 | 孙颖 | 8h | 240 |
| 59 | 3.2.4.2 | 注册 | manual | 1d | 2020-05-25 | 2020-05-25 | 58 | 孙颖 | 8h | 240 |
| 60 | 3.2.4.3 | 登录 | manual | 1d | 2020-05-26 | 2020-05-26 | 59 | 孙颖 | 8h | 240 |
| 61 | 3.2.4.4 | 找回密码 | manual | 2d | 2020-05-27 | 2020-05-28 | 60 | 孙颖 | 16h | 480 |
| 62 | 3.2.4.5 | 第三方登录(免注册) | manual | 2d | 2020-05-29 | 2020-06-01 | 58 | 孙颖 | 16h | 480 |
| 63 | 3.3 | **项目监控** |  | 4d | 2020-06-05 | 2020-06-10 |  |  | 32h | 1,920 |
| 64 | 3.3.1 | 各项指标评审 | manual | 1d | 2020-06-05 | 2020-06-05 | 38 | 谷小雨 | 8h | 480 |
| 65 | 3.3.2 | 监控评审 | manual | 1d | 2020-06-08 | 2020-06-08 | 64 | 谷小雨 | 8h | 480 |
| 66 | 3.3.3 | 变更评审 | manual | 1d | 2020-06-09 | 2020-06-09 | 65 | 谷小雨 | 8h | 480 |
| 67 | 3.3.4 | 例会举行 | manual | 1d | 2020-06-10 | 2020-06-10 | 66 | 谷小雨 | 8h | 480 |
| 68 | 3.4 | **管理干系人** |  | 3d | 2020-06-11 | 2020-06-15 |  |  | 24h | 1,440 |
| 69 | 3.4.1 | 项目信息发布 | manual | 1d | 2020-06-11 | 2020-06-11 | 38 | 谷小雨 | 8h | 480 |
| 70 | 3.4.2 | 汇报监控指标 | manual | 1d | 2020-06-12 | 2020-06-12 | 38 | 谷小雨 | 8h | 480 |
| 71 | 3.4.3 | 干系人交流 | manual | 1d | 2020-06-15 | 2020-06-15 | 38 | 谷小雨 | 8h | 480 |
| 72 | 3.5 | **团队建设** |  | 4d | 2020-06-16 | 2020-06-19 |  |  | 128h | 4,960 |
| 73 | 3.5.1 | 培训 | manual | 2d | 2020-06-16 | 2020-06-17 | 38 | 张春庆; 赵若曦; 孙颖 | 64h | 2,480 |
| 74 | 3.5.2 | 娱乐活动 | manual | 1d | 2020-06-18 | 2020-06-18 | 38 | 张春庆; 赵若曦; 孙颖 | 32h | 1,240 |
| 75 | 3.5.3 | 沟通交流 | manual | 1d | 2020-06-19 | 2020-06-19 | 38 | 张春庆; 赵若曦; 孙颖 | 32h | 1,240 |
| 76 | 3.6 | 采购 | manual | 15d | 2020-06-22 | 2020-07-10 | 38 | 谷小雨 | 120h | 7,200 |
| 77 | 3.7 | 项目验收 | manual | 2d | 2020-07-13 | 2020-07-14 | 39 | 张春庆; 赵若曦 | 48h | 1,840 |

| ID | WBS | Task | Type | Duration | Start | Finish | Predecessors | Resources | Work | Cost |
| --- | --- | --- | --- | --- | --- | --- | --- | --- | --- | --- |
| 78 | 4 | **收尾** |  | 3d | 2020-07-15 | 2020-07-17 |  | 间接成本 [0.1%]; 储备 [0.1%] | 72h | 3,980 |
| 79 | 4.1 | 项目终验 | manual | 1d | 2020-07-15 | 2020-07-15 | 77 | 张春庆; 赵若曦; 谷小雨; 孙颖 | 32h | 1,400 |
| 80 | 4.2 | 结束采购 | manual | 1d | 2020-07-16 | 2020-07-16 | 77 | 谷小雨 | 8h | 480 |
| 81 | 4.3 | 项目内部收尾 | manual | 1d | 2020-07-17 | 2020-07-17 | 77 | 张春庆; 赵若曦; 谷小雨; 孙颖 | 32h | 1,400 |
